# CPROY_V0.1_2016

Schedule from MS Project, 2016-05-02 to 2016-07-27, A marks actual dates.

## Calendars

- Estándar: Mon-Fri 09:00-13:00, 15:00-19:00; Sat-Sun off.

## Resources

| Resource |
| --- |
| Gustavo |
| Mirian |
| Cesar |
| Lucho |
| Cersa |

## Schedule

| ID | WBS | Task | Type | Duration | Start | Finish | Predecessors | Complete | Remaining | Resources | Work | Actual work | Porcentaje |
| --- | --- | --- | --- | --- | --- | --- | --- | --- | --- | --- | --- | --- | --- |
| 1 | 1 | **Proyecto de Sistema de Control de Productividad** |  | 63d | 2016-05-02 A | 2016-07-27 |  | 99% | 0d | Cesar; Gustavo; Lucho; Mirian | 32560h | 32112h |  |
| 2 | 1.1 | **Gestión PP-PMC** |  | 61d | 2016-05-02 A | 2016-07-25 |  | 99% | 0d | Cesar; Gustavo; Lucho; Mirian | 13984h | 13536h |  |
| 3 | 1.1.1 | **Inicio** |  | 58d | 2016-05-02 A | 2016-07-20 A |  | 100% |  | Cesar; Gustavo; Lucho; Mirian | 3712h | 3712h |  |
| 4 | 1.1.1.1 | Revisión de la Metodología de Trabajo | manual | 58d | 2016-05-02 A | 2016-07-20 A |  | 100% |  | Gustavo; Mirian; Cesar; Lucho | 1856h | 1856h | 100 |
| 5 | 1.1.2 | **Planificación** |  | 22d | 2016-05-02 A | 2016-05-31 A |  | 100% |  | Cesar; Gustavo; Lucho; Mirian | 2520h | 2520h |  |
| 6 | 1.1.2.1 | **Plan del Proyecto** |  | 22d | 2016-05-02 A | 2016-05-31 A | 3 | 100% |  | Cesar; Gustavo; Lucho; Mirian | 1816h | 1816h |  |
| 7 | 1.1.2.1.1 | **Elaboración de Plan de Proyecto** |  | 22d | 2016-05-02 A | 2016-05-31 A |  | 100% |  | Cesar; Gustavo; Lucho; Mirian | 976h | 976h |  |
| 8 | 1.1.2.1.1.1 | Definir Nombre del Proyecto | manual | 1d | 2016-05-02 A | 2016-05-02 A |  | 100% |  | Gustavo; Lucho | 8h | 8h | 100 |
| 9 | 1.1.2.1.1.2 | Definir Objetivos de Proyecto | manual | 1d | 2016-05-02 A | 2016-05-02 A |  | 100% |  | Gustavo; Lucho | 16h | 16h | 100 |
| 10 | 1.1.2.1.1.3 | Elaborar Cronograma de Actividades | manual | 11d | 2016-05-11 A | 2016-05-25 A |  | 100% |  | Gustavo; Mirian | 88h | 88h | 100 |
| 11 | 1.1.2.1.1.4 | Gestión de Comunicaciones | manual | 2d | 2016-05-12 A | 2016-05-13 A |  | 100% |  | Lucho | 16h | 16h | 100 |
| 12 | 1.1.2.1.1.5 | Necesidades del Proyecto | manual | 2d | 2016-05-16 A | 2016-05-17 A |  | 100% |  | Cesar | 16h | 16h | 100 |
| 13 | 1.1.2.1.1.6 | Identificación de Riesgos del Proyecto | manual | 1d | 2016-05-17 A | 2016-05-17 A |  | 100% |  | Cesar | 8h | 8h | 100 |
| 14 | 1.1.2.1.1.7 | Elaborar Documento de Riesgos del Proyecto | manual | 5d | 2016-05-17 A | 2016-05-23 A |  | 100% |  | Cesar; Mirian | 64h | 64h | 100 |
| 15 | 1.1.2.1.1.8 | Elaborar Documento Plan de Proyecto | manual | 7d | 2016-05-23 A | 2016-05-31 A |  | 100% |  | Gustavo; Lucho | 48h | 48h | 100 |
| 16 | 1.1.2.1.1.9 | Traspaso de Información | manual | 1d | 2016-05-25 A | 2016-05-25 A | 14, 31 | 100% |  | Gustavo | 8h | 8h | 100 |
| 17 | 1.1.2.1.2 | **Revisión Interna del Plan de Proyecto** |  | 1d | 2016-05-25 A | 2016-05-25 A |  | 100% |  | Cesar; Gustavo; Lucho; Mirian | 80h | 80h |  |
| 18 | 1.1.2.1.2.1 | Revisión de Plan de Proyecto por el equipo del Proyecto | manual | 1d | 2016-05-25 A | 2016-05-25 A |  | 100% |  | Cesar; Gustavo; Lucho; Mirian | 24h | 24h | 100 |
| 19 | 1.1.2.1.2.2 | Ajustes al Plan de Proyecto | manual | 1d | 2016-05-25 A | 2016-05-25 A |  | 100% |  | Gustavo | 8h | 8h | 100 |
| 20 | 1.1.2.1.2.3 | Elaborar Acta de REVISION INTERNA del PLAN DE PROYECTO | manual | 1d | 2016-05-25 A | 2016-05-25 A |  | 100% |  | Mirian | 8h | 8h | 100 |
| 21 | 1.1.2.1.2.4 | Traspaso de Información | manual | 1d | 2016-05-25 A | 2016-05-25 A |  | 100% |  | Mirian | 8h | 8h | 100 |
| 22 | 1.1.2.1.3 | **Gestión de la Configuración** |  | 1d | 2016-05-16 A | 2016-05-16 A |  | 100% |  | Cesar; Gustavo; Lucho; Mirian | 56h | 56h |  |
| 23 | 1.1.2.1.3.1 | Establecer Repositorio de Datos | manual | 1d | 2016-05-16 A | 2016-05-16 A |  | 100% |  | Mirian | 8h | 8h | 100 |
| 24 | 1.1.2.1.3.2 | Asignar Gestor de Configuración | manual | 1d | 2016-05-16 A | 2016-05-16 A | 23 | 100% |  | Mirian | 8h | 8h | 100 |
| 25 | 1.1.2.1.3.3 | Elaborar Solicitud de Accesos | manual | 1d | 2016-05-16 A | 2016-05-16 A |  | 100% |  | Mirian | 8h | 8h | 100 |

| ID | WBS | Task | Type | Duration | Start | Finish | Complete | Remaining | Actual start | Resources | Work | Actual work | Porcentaje |
| --- | --- | --- | --- | --- | --- | --- | --- | --- | --- | --- | --- | --- | --- |
| 26 | 1.1.3 | **Asignación, Ejecución, Seguimiento y Control** |  | 36d | 2016-06-06 | 2016-07-25 | 99% | 0d | 2016-05-09 | Cesar; Gustavo; Lucho; Mirian | 3944h | 3496h |  |
| 27 | 1.1.3.1 | **Desarrollo del Área de Proceso PP- PMC** |  | 25d | 2016-05-11 A | 2016-06-14 | 99% | 0d |  | Cesar; Gustavo; Lucho; Mirian | 1176h | 728h |  |
| 28 | 1.1.3.1.1 | Elaborar Cronograma de Actividades | manual | 11d | 2016-05-11 A | 2016-05-25 A | 100% |  |  | Gustavo; Mirian | 88h | 88h | 100 |
| 29 | 1.1.3.1.2 | Elaborar Plantilla de Informe de Avances Quincenales | manual | 11d | 2016-05-11 A | 2016-05-25 A | 100% |  |  | Mirian | 88h | 88h | 100 |
| 30 | 1.1.3.1.3 | Elaborar Plantillas de Actas de Reunión Interna | manual | 1d | 2016-05-11 A | 2016-05-11 A | 100% |  |  | Mirian | 8h | 8h | 100 |
| 31 | 1.1.3.1.4 | Elaborar Documento de Riesgos del Proyecto | manual | 4d | 2016-05-17 A | 2016-05-20 A | 100% |  |  | Cesar; Mirian | 64h | 64h | 100 |
| 32 | 1.1.3.1.5 | Elaborar Documento del Plan de Proyecto | manual | 3d | 2016-05-23 A | 2016-05-25 A | 100% |  |  | Cesar; Lucho | 48h | 48h | 100 |
| 33 | 1.1.3.1.6 | Elaborar PPT Procesos de Gestion de Proyecto | manual | 3d | 2016-05-23 A | 2016-05-25 A | 100% |  |  | Cesar | 24h | 24h | 100 |
| 34 | 1.1.3.1.7 | Elaborar Plantillas de Actas de Reunion Externa | manual | 1d | 2016-05-25 A | 2016-05-25 A | 100% |  |  | Mirian | 8h | 8h | 100 |
| 35 | 1.1.3.1.8 | Elaborar Formato de Acta de Reunión Kick of Meeting Interna | manual | 1d | 2016-05-25 A | 2016-05-25 A | 100% |  |  | Mirian | 8h | 8h | 100 |
| 36 | 1.1.3.1.9 | Elaborar Formato de Acta de Reunión Kick of Meeting Externa | manual | 1d | 2016-05-25 A | 2016-05-25 A | 100% |  |  | Mirian | 8h | 8h | 100 |
| 37 | 1.1.3.1.10 | Elaborar Plantillas Acta de Aceptacion de Entregables | manual | 1d | 2016-05-25 A | 2016-05-25 A | 100% |  |  | Mirian; Gustavo | 8h | 8h | 100 |
| 38 | 1.1.3.1.11 | Elaborar Plantillas Acta de Revision del Plan de Proyecto | manual | 1d | 2016-05-25 A | 2016-05-25 A | 100% |  |  | Gustavo; Mirian | 16h | 16h | 100 |
| 39 | 1.1.3.1.12 | Traspaso de Información | manual | 1d | 2016-05-25 A | 2016-05-27 A | 100% |  |  | Mirian | 8h | 8h | 100 |
| 40 | 1.1.3.2 | **Desarrollo del Área de Proceso REQM** |  | 12d | 2016-05-26 | 2016-06-10 A | 100% |  | 2016-05-09 | Cesar; Gustavo; Lucho; Mirian | 960h | 960h |  |
| 41 | 1.1.3.2.1 | Elaborar Formato de Lista Maestra de Requerimientos | manual | 3d | 2016-05-26 A | 2016-05-30 A | 100% |  |  | Mirian | 24h | 24h | 100 |
| 42 | 1.1.3.2.2 | Elaborar Formato de Solicitud a Cambios a Requerimientos | manual | 1d | 2016-05-31 A | 2016-05-31 A | 100% |  |  | Gustavo | 8h | 8h | 100 |
| 43 | 1.1.3.2.3 | Elaborar Formato de Matriz de Trazabilidad de Requerimientos | manual | 3d | 2016-05-31 A | 2016-06-02 A | 100% |  |  | Mirian | 24h | 24h | 100 |
| 44 | 1.1.3.2.4 | Elaborar Documento de Análisis | manual | 3d | 2016-06-01 A | 2016-06-03 A | 100% |  |  | Gustavo; Lucho | 48h | 48h | 100 |
| 45 | 1.1.3.2.5 | Elaborar Documento de Casos de Uso | manual | 25d | 2016-05-09 A | 2016-06-10 A | 100% |  |  | Cesar; Lucho | 400h | 400h | 100 |
| 46 | 1.1.3.2.6 | Elaborar Formato de Acta de Solicitud de Cambios a Requerimientos | manual | 1d | 2016-06-02 A | 2016-06-02 A | 100% |  |  | Mirian | 8h | 8h | 100 |
| 47 | 1.1.3.2.7 | Elaborar Formato de Registro de Cambios a Requerimientos | manual | 1d | 2016-06-03 A | 2016-06-03 A | 100% |  |  | Gustavo | 8h | 8h | 100 |
| 48 | 1.1.3.2.8 | Elaborar PPT Proceso de Gestión de cambios de Requerimientos | manual | 4d | 2016-06-06 A | 2016-06-09 A | 100% |  |  | Cesar | 32h | 32h | 100 |
| 49 | 1.1.3.2.9 | Traspaso de Información | manual | 1d | 2016-06-10 A | 2016-06-10 A | 100% |  |  | Cesar; Gustavo; Mirian | 24h | 24h | 100 |

| ID | WBS | Task | Type | Duration | Start | Finish | Complete | Resources | Work | Actual work | Porcentaje |
| --- | --- | --- | --- | --- | --- | --- | --- | --- | --- | --- | --- |
| 50 | 1.1.3.3 | **Desarrollo del Área de Proceso PPQA** |  | 8d | 2016-05-26 A | 2016-06-06 A | 100% | Cesar; Gustavo; Lucho; Mirian | 408h | 408h |  |
| 51 | 1.1.3.3.1 | Elaborar Formato de CheckList de Aseguramiento de la Calidad | manual | 3d | 2016-05-26 A | 2016-05-30 A | 100% | Cesar | 24h | 24h | 100 |
| 52 | 1.1.3.3.2 | Elaborar Herramienta de Gestión de Aseguramiento de la Calidad | manual | 2d | 2016-05-30 A | 2016-05-31 A | 100% | Cesar | 16h | 16h | 100 |
| 53 | 1.1.3.3.3 | Elaborar Plantilla de Informe General de QA | manual | 1d | 2016-05-31 A | 2016-05-31 A | 100% | Cesar | 8h | 8h | 100 |
| 54 | 1.1.3.3.4 | Elaborar Matriz de Seguimiento del Proyecto | manual | 2d | 2016-05-31 A | 2016-06-01 A | 100% | Cesar; Gustavo; Lucho; Mirian | 64h | 64h | 100 |
| 55 | 1.1.3.3.5 | Elaborar PPT Proceso de Aseguramiento de la calidad | manual | 4d | 2016-06-01 A | 2016-06-06 A | 100% | Cesar | 32h | 32h | 100 |
| 56 | 1.1.3.3.6 | Elaborar Auditoria de Gestion de la Configuracion | manual | 1d | 2016-06-06 A | 2016-06-06 A | 100% |  |  |  | 100 |
| 57 | 1.1.3.3.7 | Traspaso de Información | manual | 1d | 2016-06-06 A | 2016-06-06 A | 100% | Cesar | 8h | 8h | 100 |
| 58 | 1.1.3.4 | **Desarrollo del Área de Proceso MA** |  | 7d | 2016-06-01 A | 2016-06-09 A | 100% | Gustavo | 160h | 160h |  |
| 59 | 1.1.3.4.1 | Elaborar Formato de Ficha de Métricas de Numero de N Conformidades de Producto | manual | 2d | 2016-06-01 A | 2016-06-02 A | 100% | Gustavo | 16h | 16h | 100 |
| 60 | 1.1.3.4.2 | Elaborar Formato de Ficha de Métricas de Índice de Cambios de Ítems de Configuración | manual | 2d | 2016-06-02 A | 2016-06-03 A | 100% | Gustavo | 16h | 16h | 100 |
| 61 | 1.1.3.4.3 | Elaborar Formato de Ficha de Métricas de Volatilidad de Requerimientos | manual | 2d | 2016-06-03 A | 2016-06-06 A | 100% | Gustavo | 16h | 16h | 100 |
| 62 | 1.1.3.4.4 | Elaborar Formato de Ficha de Métricas de Exposición al Riesgo | manual | 2d | 2016-06-06 A | 2016-06-07 A | 100% | Gustavo | 16h | 16h | 100 |
| 63 | 1.1.3.4.5 | Elaborar Formato de Tablero de Métricas | manual | 2d | 2016-06-07 A | 2016-06-08 A | 100% | Gustavo | 16h | 16h | 100 |
| 64 | 1.1.3.4.6 | Elaborar PPT Proceso de Medicion de Métricas | manual | 2d | 2016-06-08 A | 2016-06-09 A | 100% | Gustavo | 16h | 16h | 100 |
| 65 | 1.1.3.4.7 | Traspaso de Información | manual | 1d | 2016-06-09 A | 2016-06-09 A | 100% | Gustavo | 8h | 8h | 100 |
| 66 | 1.1.3.5 | **Desarrollo del Área de Proceso CM** |  | 4d | 2016-06-09 A | 2016-06-14 A | 100% | Mirian | 88h | 88h |  |
| 67 | 1.1.3.5.1 | Elaborar Formato de Registro de Ítems de Configuración | manual | 2d | 2016-06-09 A | 2016-06-10 A | 100% | Mirian | 16h | 16h | 100 |
| 68 | 1.1.3.5.2 | Elaborar Formato de Solicitud de Accesos | manual | 1d | 2016-06-10 A | 2016-06-10 A | 100% | Mirian | 8h | 8h | 100 |
| 69 | 1.1.3.5.3 | Elaborar PPT Proceso de Gestión de Configuración | manual | 3d | 2016-06-10 A | 2016-06-14 A | 100% | Mirian | 24h | 24h | 100 |
| 70 | 1.1.3.5.4 | Traspaso de Información | manual | 1d | 2016-06-14 A | 2016-06-14 A | 100% | Mirian | 8h | 8h | 100 |
| 71 | 1.1.4 | **Cierre** |  | 21d | 2016-06-21 A | 2016-07-19 A | 100% | Lucho; Cesar; Gustavo; Mirian | 1856h | 1856h |  |
| 72 | 1.1.4.1 | **Cierre de Proyecto** |  | 11d | 2016-06-21 A | 2016-07-05 A | 100% | Lucho; Gustavo | 264h | 264h |  |
| 73 | 1.1.4.1.1 | Revisión de Entregables del Proyecto | manual | 7d | 2016-06-21 A | 2016-06-29 A | 100% | Lucho | 56h | 56h | 100 |
| 74 | 1.1.4.1.2 | Elaboración del Acta de Aceptación y Cierre del Proyecto | manual | 3d | 2016-06-29 A | 2016-07-01 A | 100% | Gustavo | 24h | 24h | 100 |
| 75 | 1.1.4.1.3 | Traspaso de Información | manual | 1d | 2016-07-01 A | 2016-07-01 A | 100% | Lucho | 8h | 8h | 100 |

| ID | WBS | Task | Type | Duration | Start | Finish | Complete | Actual start | Resources | Work | Actual work | Porcentaje |
| --- | --- | --- | --- | --- | --- | --- | --- | --- | --- | --- | --- | --- |
| 76 | 1.1.4.2 | **Auditoria de Gestion de Configuracion** |  | 12d | 2016-07-04 A | 2016-07-19 A | 100% |  | Gustavo; Mirian | 320h | 320h |  |
| 77 | 1.1.4.2.1 | Elaborar Auditoria de Gestion de Configuracion | manual | 1d | 2016-07-05 A | 2016-07-05 A | 100% |  | Gustavo; Mirian | 16h | 16h | 100 |
| 78 | 1.1.4.2.2 | Revisión y ajustes de Auditoria de Gestion de Configuracion | manual | 3d | 2016-07-06 A | 2016-07-08 A | 100% |  | Gustavo; Mirian | 48h | 48h | 100 |
| 79 | 1.1.4.2.3 | Revisión de Auditoria de Gestion de Configuracion | manual | 3d | 2016-07-09 A | 2016-07-12 A | 100% |  | Gustavo; Mirian | 48h | 48h | 100 |
| 80 | 1.1.4.2.4 | Traspaso de Información | manual | 1d | 2016-07-18 A | 2016-07-18 A | 100% |  | Gustavo; Mirian | 16h | 16h | 100 |
| 81 | 1.1.4.3 | **Relatorio de Proyecto** |  | 12d | 2016-07-04 A | 2016-07-19 A | 100% |  | Lucho; Cesar; Gustavo; Mirian | 600h | 600h |  |
| 82 | 1.1.4.3.1 | Elaborar Relatorio de Proyecto | manual | 5d | 2016-07-04 A | 2016-07-08 A | 100% |  | Lucho; Cesar | 80h | 80h | 100 |
| 83 | 1.1.4.3.2 | Revisión y ajustes de Relatorio por el equipo del Proyecto | manual | 5d | 2016-07-08 A | 2016-07-14 A | 100% |  | Gustavo; Mirian | 80h | 80h | 100 |
| 84 | 1.1.4.3.3 | Revisión de Relatorio | manual | 3d | 2016-07-14 A | 2016-07-18 A | 100% |  | Lucho; Gustavo | 48h | 48h | 100 |
| 85 | 1.1.4.3.4 | Traspaso de Información | manual | 1d | 2016-07-19 A | 2016-07-19 A | 100% |  | Lucho | 8h | 8h | 100 |
| 86 | 1.2 | **Ingeniería-REQM** |  | 53d | 2016-05-16 | 2016-07-27 A | 100% | 2016-05-02 | Cesar; Gustavo; Lucho; Mirian | 7392h | 7392h |  |
| 87 | 1.2.1 | **Software SISTEMA DE CONTROL DE PRODUCTIVIDAD** |  | 56d | 2016-05-11 | 2016-07-27 A | 100% | 2016-05-02 | Cesar; Gustavo; Lucho; Mirian | 5696h | 5696h |  |
| 88 | 1.2.1.1 | **Requerimientos** |  | 20d | 2016-05-11 | 2016-06-07 A | 100% | 2016-05-02 | Cesar; Lucho; Gustavo; Mirian | 984h | 984h |  |
| 89 | 1.2.1.1.1 | Desarrollar Plan de Proyecto | manual | 18d | 2016-05-02 A | 2016-05-25 A | 100% |  | Gustavo; Lucho | 288h | 288h | 100 |
| 90 | 1.2.1.1.2 | Elaborar Lista Maestra de Requerimientos | manual | 3d | 2016-05-26 A | 2016-05-30 A | 100% |  | Mirian | 24h | 24h | 100 |
| 91 | 1.2.1.1.3 | Elaborar Matriz de Trazabilidad de Requerimientos | manual | 3d | 2016-05-31 A | 2016-06-02 A | 100% |  | Mirian | 24h | 24h | 100 |
| 92 | 1.2.1.1.4 | Traspaso de Información | manual | 1d | 2016-05-31 A | 2016-05-31 A | 100% |  | Mirian | 8h | 8h | 100 |
| 93 | 1.2.1.2 | **Análisis** |  | 14d | 2016-05-31 A | 2016-06-17 A | 100% |  | Gustavo; Lucho; Cesar | 512h | 512h |  |
| 94 | 1.2.1.2.1 | Revisión de Matriz de Trazabilidad de Requerimientos | manual | 2d | 2016-05-31 A | 2016-06-01 A | 100% |  | Gustavo; Lucho | 32h | 32h | 100 |
| 95 | 1.2.1.2.2 | Elaborar Documento de Análisis | manual | 3d | 2016-06-01 A | 2016-06-03 A | 100% |  | Gustavo; Lucho | 48h | 48h | 100 |
| 96 | 1.2.1.2.3 | Elaborar Documento de Casos de Uso | manual | 5d | 2016-06-06 A | 2016-06-10 A | 100% |  | Cesar; Lucho | 80h | 80h | 100 |
| 97 | 1.2.1.2.4 | Actualizar Matriz de Trazabilidad de Requerimientos | manual | 1d | 2016-06-16 A | 2016-06-16 A | 100% |  | Cesar | 8h | 8h | 100 |
| 98 | 1.2.1.2.5 | Traspaso de Información | manual | 1d | 2016-06-17 A | 2016-06-17 A | 100% |  | Lucho | 8h | 8h | 100 |
| 99 | 1.2.1.3 | **Diseño** |  | 4d | 2016-06-21 | 2016-06-24 A | 100% | 2016-06-20 | Lucho; Cesar; Gustavo | 144h | 144h |  |
| 100 | 1.2.1.3.1 | Elaborar Documento de Diseño | manual | 4d | 2016-06-20 A | 2016-06-23 A | 100% |  | Lucho | 32h | 32h | 100 |
| 101 | 1.2.1.3.2 | Actualizar Matriz de Trazabilidad de Requerimientos | manual | 1d | 2016-06-23 A | 2016-06-23 A | 100% |  | Lucho | 8h | 8h | 100 |
| 102 | 1.2.1.3.3 | Traspaso de Información | manual | 1d | 2016-06-23 A | 2016-06-23 A | 100% |  | Lucho | 8h | 8h | 100 |

| ID | WBS | Task | Type | Duration | Start | Finish | Complete | Constraint | Resources | Work | Actual work | Porcentaje |
| --- | --- | --- | --- | --- | --- | --- | --- | --- | --- | --- | --- | --- |
| 103 | 1.2.1.4 | **Construcción** |  | 13d | 2016-06-24 A | 2016-07-12 A | 100% |  | Cesar; Gustavo; Lucho; Mirian | 1888h | 1888h |  |
| 104 | 1.2.1.4.1 | **Modulo Login** |  | 3d | 2016-06-24 A | 2016-06-28 A | 100% |  | Gustavo; Lucho; Cesar; Mirian | 320h | 320h |  |
| 105 | 1.2.1.4.1.1 | **Construcción de Modulo** |  | 3d | 2016-06-24 A | 2016-06-28 A | 100% |  | Gustavo; Lucho; Cesar; Mirian | 224h | 224h |  |
| 106 | 1.2.1.4.1.1.1 | Únicamente los empleados y ejecutivos tendrán acceso al sistema | manual | 3d | 2016-06-24 A | 2016-06-28 A | 100% |  | Gustavo; Lucho; Cesar | 72h | 72h | 100 |
| 107 | 1.2.1.4.1.1.2 | Mensaje de error al ingresar datos incorrectos | manual | 1d | 2016-06-28 A | 2016-06-28 A | 100% |  | Gustavo; Lucho; Cesar | 24h | 24h | 100 |
| 108 | 1.2.1.4.1.1.3 | Redireccion a pagina principal al ingresar datos correctos | manual | 1d | 2016-06-28 A | 2016-06-28 A | 100% |  | Gustavo; Lucho; Cesar | 24h | 24h | 100 |
| 109 | 1.2.1.4.1.1.4 | Traspaso de Informacion | manual | 1d | 2016-06-28 A | 2016-06-28 A | 100% |  | Mirian | 8h | 8h | 100 |
| 110 | 1.2.1.4.2 | **Modulo Lista de Actividades** |  | 4d | 2016-06-29 A | 2016-07-04 A | 100% |  | Gustavo; Lucho; Cesar; Mirian | 408h | 408h |  |
| 111 | 1.2.1.4.2.1 | **Construcción de Modulo** |  | 4d | 2016-06-29 A | 2016-07-04 A | 100% |  | Gustavo; Lucho; Cesar; Mirian | 280h | 280h |  |
| 112 | 1.2.1.4.2.1.1 | Registros de clientes o actividad | manual | 3d | 2016-06-29 A | 2016-07-01 A | 100% |  | Cesar; Gustavo; Lucho | 72h | 72h | 100 |
| 113 | 1.2.1.4.2.1.2 | Informacion detallada de clientes y actividad | manual | 2d | 2016-07-01 A | 2016-07-04 A | 100% |  | Cesar; Gustavo; Lucho | 48h | 48h | 100 |
| 114 | 1.2.1.4.2.1.3 | Visualizacion de clientes | manual | 1d | 2016-07-04 A | 2016-07-04 A | 100% |  | Cesar; Gustavo; Lucho | 24h | 24h | 100 |
| 115 | 1.2.1.4.2.1.4 | Traspaso de Información | manual | 1d | 2016-07-04 A | 2016-07-04 A | 100% |  | Mirian | 8h | 8h | 100 |
| 116 | 1.2.1.4.3 | **Modulo Cuadro Estadistico** |  | 3d | 2016-07-04 A | 2016-07-06 A | 100% |  | Gustavo; Lucho; Cesar; Mirian | 296h | 296h |  |
| 117 | 1.2.1.4.3.1 | **Construcción de Modulo** |  | 3d | 2016-07-04 A | 2016-07-06 A | 100% |  | Gustavo; Lucho; Cesar; Mirian | 200h | 200h |  |
| 118 | 1.2.1.4.3.1.1 | Productividad del empleado | manual | 2d | 2016-07-04 A | 2016-07-05 A | 100% |  | Cesar; Gustavo; Lucho | 48h | 48h | 100 |
| 119 | 1.2.1.4.3.1.2 | Productividad de la empresa | manual | 2d | 2016-07-05 A | 2016-07-06 A | 100% |  | Cesar; Gustavo; Lucho | 48h | 48h | 100 |
| 120 | 1.2.1.4.3.1.3 | Traspaso de Información | manual | 1d | 2016-07-06 A | 2016-07-06 A | 100% |  | Mirian | 8h | 8h | 100 |
| 121 | 1.2.1.4.4 | **Modulo Busqueda** |  | 3d | 2016-07-06 A | 2016-07-08 A | 100% |  | Gustavo; Lucho; Cesar; Mirian | 248h | 248h |  |
| 122 | 1.2.1.4.4.1 | **Construcción del Modulo** |  | 3d | 2016-07-06 A | 2016-07-08 A | 100% |  | Gustavo; Lucho; Cesar; Mirian | 152h | 152h |  |
| 123 | 1.2.1.4.4.1.1 | Busqueda por parametros | manual | 2d | 2016-07-06 A | 2016-07-07 A | 100% |  | Cesar; Gustavo; Lucho | 48h | 48h | 100 |
| 124 | 1.2.1.4.4.1.2 | Traspaso de Información | manual | 1d | 2016-07-08 A | 2016-07-08 A | 100% |  | Mirian | 8h | 8h | 100 |
| 125 | 1.2.1.4.5 | **Modulo Exportación** |  | 2d | 2016-07-08 A | 2016-07-11 A | 100% |  | Gustavo; Lucho; Cesar; Mirian | 184h | 184h |  |
| 126 | 1.2.1.4.5.1 | **Construcción del Modulo** |  | 2d | 2016-07-08 A | 2016-07-11 A | 100% |  | Gustavo; Lucho; Cesar; Mirian | 120h | 120h |  |
| 127 | 1.2.1.4.5.1.1 | Exportar por PDF | manual | 1d | 2016-07-08 A | 2016-07-08 A | 100% |  | Cesar; Gustavo; Lucho | 24h | 24h | 100 |
| 128 | 1.2.1.4.5.1.2 | Exportar por Excel |  | 1d | 2016-07-11 A | 2016-07-11 A | 100% | start no earlier than 2016-07-11 | Cesar; Gustavo; Lucho | 24h | 24h | 100 |
| 129 | 1.2.1.4.5.1.3 | Traspaso de Información |  | 1d | 2016-07-11 A | 2016-07-11 A | 100% | start no earlier than 2016-07-11 | Mirian | 8h | 8h | 100 |
| 130 | 1.2.1.4.6 | Actualizar Matriz de Trazabilidad de Requerimientos | manual | 1d | 2016-07-12 A | 2016-07-12 A | 100% |  | Mirian | 8h | 8h | 100 |
| 131 | 1.2.1.4.7 | Traspaso de Información | manual | 1d | 2016-07-12 A | 2016-07-12 A | 100% |  | Mirian | 8h | 8h | 100 |

| ID | WBS | Task | Type | Duration | Start | Finish | Complete | Resources | Work | Actual work | Porcentaje |
| --- | --- | --- | --- | --- | --- | --- | --- | --- | --- | --- | --- |
| 132 | 1.2.1.5 | **Pruebas** |  | 6d | 2016-07-12 A | 2016-07-19 A | 100% | Cesar; Gustavo; Lucho; Mirian | 312h | 312h |  |
| 133 | 1.2.1.5.1 | Elaborar Documento de Pruebas Internas | manual | 3d | 2016-07-12 A | 2016-07-14 A | 100% | Mirian; Gustavo | 48h | 48h | 100 |
| 134 | 1.2.1.5.2 | Elaborar Documento de Pruebas del Sistema | manual | 1d | 2016-07-14 A | 2016-07-14 A | 100% | Cesar; Lucho | 16h | 16h | 100 |
| 135 | 1.2.1.5.3 | Elaborar Documento de Pruebas Externas | manual | 1d | 2016-07-15 A | 2016-07-15 A | 100% | Cesar; Gustavo | 16h | 16h | 100 |
| 136 | 1.2.1.5.4 | Elaborar Documento de Pruebas Funcionales | manual | 1d | 2016-07-16 A | 2016-07-16 A | 100% | Cesar; Gustavo | 16h | 16h | 100 |
| 137 | 1.2.1.5.5 | Elaborar Matriz de Trazabilidad de Requerimientos Final | manual | 1d | 2016-07-17 A | 2016-07-17 A | 100% | Mirian | 8h | 8h | 100 |
| 138 | 1.2.1.5.6 | Traspaso de Información | manual | 2d | 2016-07-18 A | 2016-07-19 A | 100% | Mirian | 16h | 16h | 100 |
| 139 | 1.2.1.6 | **Implementación** |  | 2d | 2016-07-15 A | 2016-07-18 A | 100% | Lucho; Mirian | 64h | 64h |  |
| 140 | 1.2.1.6.1 | Elaborar Guía de Instalación | manual | 1d | 2016-07-15 A | 2016-07-15 A | 100% | Lucho | 8h | 8h | 100 |
| 141 | 1.2.1.6.2 | Elaborar Manual de Usuario | manual | 1d | 2016-07-18 A | 2016-07-18 A | 100% | Lucho | 8h | 8h | 100 |
| 142 | 1.2.1.6.3 | Elaborar Manual del Sistema | manual | 1d | 2016-07-18 A | 2016-07-18 A | 100% | Lucho | 8h | 8h | 100 |
| 143 | 1.2.1.6.4 | Traspaso de Información | manual | 1d | 2016-07-18 A | 2016-07-18 A | 100% | Mirian | 8h | 8h | 100 |
| 144 | 1.3 | **Inducción de personal** |  | 6d | 2016-06-21 A | 2016-06-28 A | 100% |  |  |  |  |
| 145 | 1.3.1 | Establecer personal para inducción | manual | 1d | 2016-06-21 A | 2016-06-21 A | 100% |  |  |  | 100 |
| 146 | 1.3.2 | Realizar inducción al personal | manual | 3d | 2016-06-22 A | 2016-06-24 A | 100% |  |  |  | 100 |
| 147 | 1.3.3 | Verificar proceso de inducción | manual | 1d | 2016-06-24 A | 2016-06-24 A | 100% |  |  |  | 100 |
| 148 | 1.3.4 | Elaborar Certificado de Inducción de Personal | manual | 1d | 2016-06-27 A | 2016-06-27 A | 100% |  |  |  | 100 |
| 149 | 1.3.5 | Traspaso de Información | manual | 1d | 2016-06-28 A | 2016-06-28 A | 100% |  |  |  | 100 |
| 150 | 1.3.6 | Pasar a área de Desarrollo a Personal Capacitado | manual | 1d | 2016-06-28 A | 2016-06-28 A | 100% |  |  |  | 100 |
| 151 | 1.4 | **Soporte-PPQA** |  | 53d | 2016-05-06 A | 2016-07-19 A | 100% | Cesar; Gustavo; Lucho; Mirian | 2856h | 2856h |  |
| 152 | 1.4.1 | **Primera Revisión** |  | 5d | 2016-05-26 A | 2016-06-01 A | 100% | Cesar; Gustavo; Lucho; Mirian | 352h | 352h |  |
| 153 | 1.4.1.1 | Elaborar CheckList de Aseguramiento de la Calidad | manual | 3d | 2016-05-26 A | 2016-05-30 A | 100% | Cesar; Gustavo; Lucho; Mirian | 96h | 96h | 100 |
| 154 | 1.4.1.2 | Elaborar Herramienta de Gestion de Aseguramiento de la Calidad | manual | 2d | 2016-05-30 A | 2016-05-31 A | 100% | Cesar; Gustavo; Lucho; Mirian | 64h | 64h | 100 |
| 155 | 1.4.1.3 | Traspaso de Información | manual | 1d | 2016-06-01 A | 2016-06-01 A | 100% | Cesar; Gustavo; Lucho; Mirian | 32h | 32h | 100 |

| ID | WBS | Task | Type | Duration | Start | Finish | Complete | Actual finish | Resources | Work | Actual work | Porcentaje |
| --- | --- | --- | --- | --- | --- | --- | --- | --- | --- | --- | --- | --- |
| 156 | 1.4.2 | **Segunda Revisión** |  | 13d | 2016-06-21 A | 2016-07-07 A | 100% |  | Cesar; Gustavo; Lucho; Mirian | 608h | 608h |  |
| 157 | 1.4.2.1 | Elaborar Herramienta de Gestion de Aseguramiento de la Calidad | manual | 3d | 2016-06-21 A | 2016-06-23 A | 100% |  | Cesar; Gustavo; Lucho; Mirian | 96h | 96h | 100 |
| 158 | 1.4.2.2 | Actualizar CheckList de Aseguramiento de la Calidad | manual | 2d | 2016-06-23 A | 2016-06-24 A | 100% |  | Cesar; Gustavo; Lucho; Mirian | 64h | 64h | 100 |
| 159 | 1.4.2.3 | Traspaso de Información | manual | 1d | 2016-06-24 A | 2016-06-24 A | 100% |  | Cesar; Gustavo; Lucho; Mirian | 32h | 32h | 100 |
| 160 | 1.4.3 | **Tercera Revisión** |  | 4d | 2016-05-06 A | 2016-05-11 | 100% | 2016-05-10 |  | 64h | 64h |  |
| 161 | 1.4.3.1 | Elaborar Herramienta de Gestion de Aseguramiento de la Calidad | manual | 3d | 2016-05-06 A | 2016-05-10 A | 100% |  |  |  |  | 100 |
| 162 | 1.4.3.2 | Actualizar CheckList de Aseguramiento de la Calidad | manual | 2d | 2016-05-06 A | 2016-05-09 A | 100% |  | Cesar; Gustavo; Lucho; Mirian | 64h | 64h | 100 |
| 163 | 1.4.3.3 | Traspaso de Información | manual | 1d | 2016-05-06 A | 2016-05-06 A | 100% |  |  |  |  | 100 |
| 164 | 1.4.4 | Elaborar Plantilla de Informe General de QA | manual | 1d | 2016-05-31 A | 2016-05-31 A | 100% |  | Cesar | 8h | 8h | 100 |
| 165 | 1.4.5 | Elaborar Matriz de Seguimiento del Proyecto | manual | 2d | 2016-05-31 A | 2016-06-01 A | 100% |  | Cesar; Gustavo; Lucho; Mirian | 64h | 64h | 100 |
| 166 | 1.4.6 | Traspaso de Información | manual | 1d | 2016-06-01 A | 2016-06-01 A | 100% |  | Cesar; Gustavo; Lucho; Mirian | 32h | 32h | 100 |
| 167 | 1.4.7 | Elaborar Auditoria de Gestion de la Configuracion | manual | 1d | 2016-05-06 A | 2016-05-06 A | 100% |  | Cesar; Gustavo; Lucho; Mirian | 32h | 32h | 100 |
| 168 | 1.5 | **Reuniones Internas SSI - S.A.C** |  | 51d | 2016-05-11 A | 2016-07-20 A | 100% |  | Cesar; Gustavo; Lucho; Mirian | 4896h | 4896h |  |
| 169 | 1.5.1 | **Kick off Meeting Interno** |  | 42d | 2016-05-24 A | 2016-07-20 A | 100% |  | Cesar; Gustavo; Lucho; Mirian | 1488h | 1488h |  |
| 170 | 1.5.1.1 | **Reunion Kick off Meeting 1** |  | 1d | 2016-05-24 A | 2016-05-24 A | 100% |  | Cesar; Gustavo; Lucho; Mirian | 48h | 48h |  |
| 171 | 1.5.1.1.1 | Elaborar Acta de Reunión | manual | 1d | 2016-05-24 A | 2016-05-24 A | 100% |  | Mirian | 8h | 8h | 100 |
| 172 | 1.5.1.1.2 | Traspaso de Informacion | manual | 1d | 2016-05-24 A | 2016-05-24 A | 100% |  | Mirian | 8h | 8h | 100 |
| 173 | 1.5.1.2 | **Reunion Kick off Meeting 2** |  | 1d | 2016-06-19 A | 2016-06-19 A | 100% |  | Cesar; Gustavo; Lucho; Mirian | 48h | 48h |  |
| 174 | 1.5.1.2.1 | Traspaso de Informacion | manual | 1d | 2016-06-19 A | 2016-06-19 A | 100% |  | Mirian | 8h | 8h | 100 |
| 175 | 1.5.1.2.2 | Elaborar Acta de Reunión | manual | 1d | 2016-06-19 A | 2016-06-19 A | 100% |  | Mirian | 8h | 8h | 100 |
| 176 | 1.5.1.3 | **Reunion Kick off Meeting 3** |  | 1d | 2016-07-19 A | 2016-07-19 A | 100% |  | Cesar; Gustavo; Lucho; Mirian | 48h | 48h |  |
| 177 | 1.5.1.3.1 | Traspaso de Informacion | manual | 1d | 2016-07-19 A | 2016-07-19 A | 100% |  | Mirian | 8h | 8h | 100 |
| 178 | 1.5.1.3.2 | Elaborar Acta de Reunión | manual | 1d | 2016-07-19 A | 2016-07-19 A | 100% |  | Mirian | 8h | 8h | 100 |
| 179 | 1.5.2 | **Reuniones Quincenales** |  | 42d | 2016-05-11 A | 2016-07-07 A | 100% |  | Cesar; Gustavo; Lucho; Mirian | 1776h | 1776h |  |
| 180 | 1.5.2.1 | **Reunión Quincenal 1** |  | 1d | 2016-05-11 A | 2016-05-11 A | 100% |  | Cesar; Gustavo; Lucho; Mirian | 48h | 48h |  |
| 181 | 1.5.2.1.1 | Elaborar Acta de Reunión | manual | 1d | 2016-05-11 A | 2016-05-11 A | 100% |  | Mirian | 8h | 8h | 100 |
| 182 | 1.5.2.1.2 | Traspaso de Información | manual | 1d | 2016-05-11 A | 2016-05-11 A | 100% |  | Mirian | 8h | 8h | 100 |

| ID | WBS | Task | Type | Duration | Start | Finish | Complete | Resources | Work | Actual work | Porcentaje |
| --- | --- | --- | --- | --- | --- | --- | --- | --- | --- | --- | --- |
| 183 | 1.5.2.2 | **Reunión Quincenal 2** |  | 1d | 2016-05-26 A | 2016-05-26 A | 100% | Cesar; Gustavo; Lucho; Mirian | 96h | 96h |  |
| 184 | 1.5.2.2.1 | Elaborar Acta de Reunión | manual | 1d | 2016-05-26 A | 2016-05-26 A | 100% | Cesar; Gustavo; Lucho; Mirian | 32h | 32h | 100 |
| 185 | 1.5.2.2.2 | Traspaso de Información | manual | 1d | 2016-05-26 A | 2016-05-26 A | 100% | Cesar; Gustavo; Lucho; Mirian | 32h | 32h | 100 |
| 186 | 1.5.2.3 | **Reunión Quincenal 3** |  | 1d | 2016-06-10 A | 2016-06-10 A | 100% | Cesar; Gustavo; Lucho; Mirian | 96h | 96h |  |
| 187 | 1.5.2.3.1 | Elaborar Acta de Reunión | manual | 1d | 2016-06-10 A | 2016-06-10 A | 100% | Cesar; Gustavo; Lucho; Mirian | 32h | 32h | 100 |
| 188 | 1.5.2.3.2 | Traspaso de Información | manual | 1d | 2016-06-10 A | 2016-06-10 A | 100% | Cesar; Gustavo; Lucho; Mirian | 32h | 32h | 100 |
| 189 | 1.5.2.4 | **Reunión Quincenal 4** |  | 1d | 2016-06-24 A | 2016-06-24 A | 100% | Cesar; Gustavo; Lucho; Mirian | 96h | 96h |  |
| 190 | 1.5.2.4.1 | Elaborar Acta de Reunión | manual | 1d | 2016-06-24 A | 2016-06-24 A | 100% | Cesar; Gustavo; Lucho; Mirian | 32h | 32h | 100 |
| 191 | 1.5.2.4.2 | Traspaso de Información | manual | 1d | 2016-06-24 A | 2016-06-24 A | 100% | Cesar; Gustavo; Lucho; Mirian | 32h | 32h | 100 |
| 192 | 1.5.2.5 | **Reunión Quincenal 5** |  | 1d | 2016-07-07 A | 2016-07-07 A | 100% | Cesar; Gustavo; Lucho; Mirian | 96h | 96h |  |
| 193 | 1.5.2.5.1 | Elaborar Acta de Reunión | manual | 1d | 2016-07-07 A | 2016-07-07 A | 100% | Cesar; Gustavo; Lucho; Mirian | 32h | 32h | 100 |
| 194 | 1.5.2.5.2 | Traspaso de Información | manual | 1d | 2016-07-07 A | 2016-07-07 A | 100% | Cesar; Gustavo; Lucho; Mirian | 32h | 32h | 100 |
| 195 | 1.6 | **Reuniones Externas SSI S.A.C - CLIENTE** |  | 41d | 2016-05-25 A | 2016-07-20 A | 100% | Cesar; Gustavo; Lucho; Mirian | 1416h | 1416h |  |
| 196 | 1.6.1 | **Primera Presentación del Proyecto** |  | 1d | 2016-05-25 A | 2016-05-25 A | 100% | Cesar; Gustavo; Lucho; Mirian | 104h | 104h |  |
| 197 | 1.6.1.1 | Reunión Externa con PDS - UTP | manual | 1d | 2016-05-25 A | 2016-05-25 A | 100% | Cesar; Gustavo; Lucho; Mirian | 32h | 32h | 100 |
| 198 | 1.6.1.2 | Acta de Reunión con acuerdos tomados | manual | 1d | 2016-05-25 A | 2016-05-25 A | 100% | Cesar; Gustavo; Lucho; Mirian | 32h | 32h | 100 |
| 199 | 1.6.1.3 | Traspaso de Información | manual | 1d | 2016-05-25 A | 2016-05-25 A | 100% | Mirian | 8h | 8h | 100 |
